# 4746 hub

Schedule from a web Gantt chart, 2024-08-09 to 2024-09-06.
Saturdays and Sundays are off

## Schedule

| ID | WBS | Task | Duration | Start | Finish | Predecessors | inPeople | Status |
| --- | --- | --- | --- | --- | --- | --- | --- | --- |
| 2 | 1 | 确认预扫问题 | 2d | 2024-08-09 | 2024-08-12 |  | 供应商 |  |
| 3 | 2 | 解决预扫问题，提交预扫通过结果 | 3d | 2024-08-13 | 2024-08-15 | 2 | 供应商 | waiting |
| 4 | 3 | ID确认配色方案 | 5d | 2024-08-12 | 2024-08-16 |  | ID | waiting |
| 5 | 4 | 开模 T0 样 | 15d | 2024-08-19 | 2024-09-06 | 4 | 供应商 | waiting |
| 6 | 5 | PCBA贴片 T0 样 | 15d | 2024-08-16 | 2024-09-05 | 3 | 供应商 | waiting |
| 7 | 6 | 产前样质量验收 | 1d | 2024-08-09 | 2024-08-09 |  | 质量 |  |
| 8 | 7 | 产前样签样 | 1d | 2024-08-09 | 2024-08-09 |  | 项目组 |  |
| 9 | 8 | 首批量产 | 15d | 2024-08-09 | 2024-08-29 |  | 供应商 |  |
| 10 | 9 | 成品入库 | 2d | 2024-08-09 | 2024-08-12 |  | 项目 |  |
| 11 | 10 | 渲染需求输出 | 1d | 2024-08-09 | 2024-08-09 |  | 产品 |  |
| 12 | 11 | 完成渲染图 | 1d | 2024-08-09 | 2024-08-09 |  | 渲染 |  |
| 13 | 12 | 包装设计 | 1d | 2024-08-09 | 2024-08-09 |  | 包装 |  |
| 14 | 13 | 包装打样 | 1d | 2024-08-09 | 2024-08-09 |  | 包装 |  |
| 15 | 14 | 包装测试 | 1d | 2024-08-09 | 2024-08-09 |  | 质量 |  |
| 16 | 15 | 包装生产 | 1d | 2024-08-09 | 2024-08-09 |  | 供应商、 |  |
| 17 | 16 | 输出中文文案 | 1d | 2024-08-09 | 2024-08-09 |  | 产品 |  |
| 18 | 17 | 翻译英文文案 | 1d | 2024-08-09 | 2024-08-09 |  | 市场 |  |
| 19 | 18 | 渲染图、中英文案录入中台 | 1d | 2024-08-09 | 2024-08-09 |  | 市场 |  |
| 20 | 19 | 输出定价定量资料 | 1d | 2024-08-09 | 2024-08-09 |  | 产品 |  |
| 21 | 20 | 完成定价审批 | 1d | 2024-08-09 | 2024-08-09 |  | 产品 |  |
| 22 | 21 | 销售区域认证费用确定 | 1d | 2024-08-09 | 2024-08-09 |  |  |  |

Notes:
- 3: 验收预烧通过结果
- 4: 确认工程师，压住需求
